# ПроГрибы

How a schedule from MS Project changed from version to version. A marks actual dates.

## Version 1 (saved 2021-12-04)

| ID | WBS | Task | Duration | Start | Finish | Predecessors | Complete | Total float | Constraint |
| --- | --- | --- | --- | --- | --- | --- | --- | --- | --- |
| 1 | 1 | **ПРОГрибы** | 205d | 2021-10-01 A | 2022-07-15 |  | 18% | 0d |  |
| 2 | 1.1 | **Разработка документации проекта** | 6d | 2021-10-01 A | 2021-10-08 A |  | 100% |  |  |
| 3 |  | Разработка устава проекта | 2d | 2021-10-01 A | 2021-10-04 A |  | 100% |  | start no earlier than 2021-10-01 |
| 4 |  | Разработка описания содержания проекта | 2d | 2021-10-05 A | 2021-10-06 A | 3 | 100% |  |  |
| 5 |  | Разработка плана управления проектом | 2d | 2021-10-07 A | 2021-10-08 A | 4 | 100% |  |  |
| 6 |  | Конец составления описания проекта | 0d | 2021-10-08 A | 2021-10-08 A | 5 | 100% |  |  |
| 7 | 1.2 | **Заключение договора с заказчиком** | 6d | 2021-10-11 A | 2021-10-18 A |  | 100% |  |  |
| 8 |  | Формирование прототипа договора | 2d | 2021-10-11 A | 2021-10-12 A | 6 | 100% |  | start no earlier than 2021-10-08 |
| 9 |  | Согласование условий договора внутри компании | 2d | 2021-10-13 A | 2021-10-14 A | 8 | 100% |  |  |
| 10 |  | Согласование условий договора с заказчиком | 2d | 2021-10-15 A | 2021-10-18 A | 9 | 100% |  |  |
| 11 |  | Подписание договора с заказчиком | 0d | 2021-10-18 A | 2021-10-18 A | 10 | 100% |  |  |
| 12 | 1.3 | **Анализ рынка** | 30d | 2021-10-19 A | 2021-11-29 |  | 88% | 163d |  |
| 13 |  | Поиск конкурентов | 5d | 2021-10-19 A | 2021-10-25 A | 11 | 100% |  |  |
| 14 |  | Составление сравнительной таблицы | 3d | 2021-10-26 A | 2021-11-29 | 13 | 67% | 163d |  |
| 15 | 1.4 | **Согласование бизнес требований** | 8d | 2021-10-28 A | 2021-11-08 A |  | 100% |  |  |
| 16 |  | Подготовка бизнес требований | 2d | 2021-10-28 A | 2021-10-29 A | 14 | 100% |  |  |
| 17 |  | Подготовка спецификации | 2d | 2021-11-01 A | 2021-11-02 A | 16 | 100% |  |  |
| 18 |  | Подготовка технического задания | 2d | 2021-11-03 A | 2021-11-04 A | 17 | 100% |  |  |
| 19 |  | Утверждение основных бизнес требований | 2d | 2021-11-05 A | 2021-11-08 A | 18 | 100% |  |  |
| 20 |  | Согласование бизнес требований | 0d | 2021-11-08 A | 2021-11-08 A | 19 | 100% |  |  |
| 21 | 1.5 | **Архитектура приложения** | 12d | 2021-11-09 A | 2021-11-24 A |  | 100% |  |  |
| 22 |  | Разработка архитектуры клиент-сервера | 5d | 2021-11-09 A | 2021-11-15 A | 20 | 100% |  |  |
| 23 |  | Подготовка архитектуры | 5d | 2021-11-16 A | 2021-11-22 A | 22 | 100% |  |  |
| 24 |  | Согласование с заказчиком | 2d | 2021-11-23 A | 2021-11-24 A | 23 | 100% |  |  |
| 25 | 1.6 | **Подгтовка дизайна приложения** | 11d | 2021-11-25 A | 2021-12-09 A |  | 100% |  |  |
| 26 |  | Подготовка прототипа | 5d | 2021-11-25 A | 2021-12-01 A | 24 | 100% |  |  |
| 27 |  | Дизайн экранных форм | 5d | 2021-12-02 A | 2021-12-08 A | 26 | 100% |  |  |
| 28 |  | Презентация итоговой версии дизайна заказчику | 1d | 2021-12-09 A | 2021-12-09 A | 27 | 100% |  |  |
| 29 |  | Подписание договора на реализацию | 0d | 2021-12-09 A | 2021-12-09 A | 28 | 100% |  |  |
| 30 | 1.7 | **Серверная часть приложения** | 44d | 2022-01-17 | 2022-03-18 |  |  | 72d |  |
| 31 |  | Адаптация алгоритма распознавания | 28d | 2022-01-17 | 2022-02-23 | 29 |  | 87d | start no earlier than 2022-01-17 |
| 32 |  | Функционал системы сообществ | 14d | 2022-02-24 | 2022-03-15 | 31 |  | 87d |  |
| 33 |  | Функционал вкладки рецептов | 7d | 2022-02-24 | 2022-03-04 | 31 |  | 94d |  |
| 34 |  | Функционал личных сообщений | 7d | 2022-02-24 | 2022-03-04 | 31 |  | 94d |  |
| 35 |  | Система достижений | 7d | 2022-02-24 | 2022-03-04 | 31 |  | 94d |  |
| 36 |  | Совмещение грибных карт | 14d | 2022-02-24 | 2022-03-15 | 31 |  | 87d |  |
| 37 |  | Менеджер аккаунтов | 14d | 2022-02-24 | 2022-03-15 | 31 |  | 87d |  |
| 38 |  | Реализация биометрического входа | 14d | 2022-02-24 | 2022-03-15 | 31 |  | 87d |  |
| 39 |  | Окончание разработки BackEnd | 0d | 2022-03-18 | 2022-03-18 |  |  | 28d | start no earlier than 2022-03-18 |
| 40 | 1.8 | **Клиентская часть** | 59d | 2022-01-17 | 2022-04-08 |  |  | 27d |  |
| 41 |  | Возможность автономной работы алгоритмв | 28d | 2022-01-17 | 2022-02-23 |  |  | 44d | start no earlier than 2022-01-17 |
| 42 |  | Разработка экранных форм | 7d | 2022-03-18 | 2022-03-28 | 41, 39 |  | 28d |  |
| 43 |  | Реализация функции SOS | 7d | 2022-03-29 | 2022-04-06 | 42 |  | 28d | start no earlier than 2022-03-18 |
| 44 |  | Справочник | 7d | 2022-03-29 | 2022-04-06 | 42 |  | 28d |  |
| 45 |  | Модуль навигации | 7d | 2022-03-29 | 2022-04-06 | 42 |  | 28d |  |
| 46 |  | Окончание разработки приложения | 0d | 2022-04-08 | 2022-04-08 | 45, 43, 44 |  | 27d | start no earlier than 2022-04-08 |
| 47 | 1.9 | **Тестирование приложения** | 37d | 2022-04-08 | 2022-05-31 |  |  | 27d |  |
| 48 |  | Модульное тестирование | 14d | 2022-04-08 | 2022-04-27 | 46 |  | 27d | start no earlier than 2022-03-16 |
| 49 |  | Интеграционное тестирование | 7d | 2022-04-28 | 2022-05-06 | 48 |  | 27d |  |
| 50 |  | Нагрузочное тестирование | 7d | 2022-05-09 | 2022-05-17 | 49 |  | 35d |  |
| 51 |  | Тестирование обновлений | 7d | 2022-05-18 | 2022-05-26 | 50 |  | 35d |  |
| 52 |  | Тестирование интерфейса | 7d | 2022-05-09 | 2022-05-17 | 49 |  | 42d |  |
| 53 |  | Тестирование функции SOS | 7d | 2022-05-09 | 2022-05-17 | 49 |  | 27d |  |
| 54 |  | Тестирование функционала экранных форм | 7d | 2022-05-18 | 2022-05-26 | 53 |  | 27d |  |
| 55 |  | Окончание тестирования приложения | 0d | 2022-05-31 | 2022-05-31 | 54 |  | 25d | start no earlier than 2022-05-31 |
| 56 | 1.10 | **Релиз приложения** | 33d | 2022-05-31 | 2022-07-15 |  |  | 0d |  |
| 57 |  | Оформить Privacy Policy | 3d | 2022-05-31 | 2022-06-02 | 55 |  | 30d | start no earlier than 2022-05-04 |
| 58 |  | Подготовить маркетинговые материалы | 3d | 2022-05-31 | 2022-06-02 | 55 |  | 30d |  |
| 59 |  | Обеспечить сборку наличием сертификата цифровой подписи | 1d | 2022-05-31 | 2022-05-31 | 55 |  | 32d |  |
| 60 |  | Настроить оплату за использование приложения | 7d | 2022-05-31 | 2022-06-08 | 55 |  | 25d |  |
| 61 |  | Отправить сборку в Google Play | 1d | 2022-06-09 | 2022-06-09 | 60 |  | 25d |  |
| 62 |  | DeadLine релиза в Google Play | 0d | 2022-07-15 | 2022-07-15 | 61 |  | 0d | start no earlier than 2022-07-15 |

## Version 2 (saved 2021-12-08)

Note of the change: Fixes

Last finish stays 2022-07-15. Complete tasks 21 → 20.

Changed:

| ID | Task | Start | Finish | Duration | Complete | Total float | Predecessors | Other |
| --- | --- | --- | --- | --- | --- | --- | --- | --- |
| 25 | **Подгтовка дизайна приложения** |  | 2021-12-09 A → 2021-12-31 (+22d) | 11d → 26d | 100% → 99% | none → 49d |  |  |
| 29 | Подписание договора на реализацию | 2021-12-09 A → 2021-12-31 (+22d) | 2021-12-09 A → 2021-12-31 (+22d) |  | 100% → 0% | none → 54d |  | constraint none → start no earlier than 2021-12-31 |
| 31 | Адаптация алгоритма распознавания |  |  |  |  | 87d → 43d |  | resources Подрядчик MindBox Алгоритм; Подрядчик MindBox Приложение → Подрядчик MindBox Алгоритм [50%]; Подрядчик MindBox Приложение [50%] |
| 32 | Функционал системы сообществ |  |  |  |  | 87d → 43d |  | resources Подрядчик MindBox Приложение → Подрядчик MindBox Приложение [15%] |
| 33 | Функционал вкладки рецептов |  |  |  |  | 94d → 43d | 31 → 32SS | resources Подрядчик MindBox Приложение → Подрядчик MindBox Приложение [15%] |
| 34 | Функционал личных сообщений |  |  |  |  | 94d → 43d | 31 → 33SS | resources Подрядчик MindBox Приложение → Подрядчик MindBox Приложение [15%] |
| 35 | Система достижений |  |  |  |  | 94d → 43d | 31 → 34SS | resources Подрядчик MindBox Приложение → Подрядчик MindBox Приложение [15%] |
| 36 | Совмещение грибных карт |  |  |  |  | 87d → 43d | 31 → 35SS | resources Подрядчик MindBox Приложение → Подрядчик MindBox Приложение [15%] |
| 37 | Менеджер аккаунтов |  |  |  |  | 87d → 43d | 31 → 36SS | resources Подрядчик MindBox Приложение → Подрядчик MindBox Приложение [15%] |
| 38 | Реализация биометрического входа |  |  |  |  | 87d → 43d | 31 → 37SS | resources Подрядчик MindBox Приложение → Подрядчик MindBox Приложение [15%] |
| 39 | Окончание разработки BackEnd |  |  |  |  | 28d → 41d | none → 31FF, 32FF, 33FF, 34FF, 35FF, 36FF, 37FF, 38FF |  |
| 41 | Возможность автономной работы алгоритмв |  |  |  |  | 44d → 57d | none → 31SF |  |
| 42 | Разработка экранных форм |  |  |  |  | 28d → 41d |  | resources Подрядчик MindBox Приложение → Подрядчик MindBox Приложение [25%] |
| 43 | Реализация функции SOS | 2022-03-29 → 2022-03-18 (-11d) | 2022-04-06 → 2022-03-28 (-9d) |  |  | 28d → 41d | 42 → 42FF | resources Подрядчик MindBox Приложение → Подрядчик MindBox Приложение [25%] |
| 44 | Справочник | 2022-03-29 → 2022-03-18 (-11d) | 2022-04-06 → 2022-03-28 (-9d) |  |  | 28d → 41d | 42 → 42FF | resources Подрядчик MindBox Приложение → Подрядчик MindBox Приложение [25%] |
| 45 | Модуль навигации | 2022-03-29 → 2022-03-18 (-11d) | 2022-04-06 → 2022-03-28 (-9d) |  |  | 28d → 41d | 42 → 42FF | resources Подрядчик MindBox Приложение → Подрядчик MindBox Приложение [25%] |
| 46 | Окончание разработки приложения |  |  |  |  | 27d → 33d | 45, 43, 44 → 45FF, 43FF, 44FF, 41FF, 42FF |  |
| 47 | **Тестирование приложения** |  | 2022-05-31 → 2022-06-07 (+7d) | 37d → 43d |  |  |  |  |
| 51 | Тестирование обновлений | 2022-05-18 → 2022-05-30 (+12d) | 2022-05-26 → 2022-06-07 (+12d) |  |  | 35d → 20d |  | constraint none → start no earlier than 2022-05-30 |
| 53 | Тестирование функции SOS |  |  |  |  | 27d → 42d | 49 → 52SS |  |
| 54 | Тестирование функционала экранных форм | 2022-05-18 → 2022-05-19 (+1d) | 2022-05-26 → 2022-05-30 (+4d) |  |  | 27d → 34d | 53 → 52, 51SF |  |
| 55 | Окончание тестирования приложения | 2022-05-31 → 2022-06-07 (+7d) | 2022-05-31 → 2022-06-07 (+7d) |  |  | 25d → 20d | 54 → 51 |  |
| 56 | **Релиз приложения** | 2022-05-31 → 2022-06-08 (+8d) |  | 33d → 27d |  |  |  |  |
| 57 | Оформить Privacy Policy | 2022-05-31 → 2022-06-08 (+8d) | 2022-06-02 → 2022-06-10 (+8d) |  |  | 30d → 20d |  |  |
| 58 | Подготовить маркетинговые материалы | 2022-05-31 → 2022-06-08 (+8d) | 2022-06-02 → 2022-06-10 (+8d) |  |  | 30d → 20d | 55 → 57SS |  |
| 59 | Обеспечить сборку наличием сертификата цифровой подписи | 2022-05-31 → 2022-06-08 (+8d) | 2022-05-31 → 2022-06-08 (+8d) |  |  | 32d → 20d | 55 → 58SS |  |
| 60 | Настроить оплату за использование приложения | 2022-05-31 → 2022-06-08 (+8d) | 2022-06-08 → 2022-06-16 (+8d) |  |  | 25d → 20d | 55 → 59SS |  |
| 61 | Отправить сборку в Google Play | 2022-06-09 → 2022-06-08 (-1d) | 2022-06-09 → 2022-06-08 (-1d) |  |  | 25d → 26d | 60 → 60SS |  |

## Version 3 (saved 2021-12-11)

Note of the change: Fixes

Last finish 2022-07-15 → 2022-08-29 (+45d). Complete tasks 20 → 21.

Added:

| ID | Task | Duration | Start | Finish | Predecessors | Resources |
| --- | --- | --- | --- | --- | --- | --- |
| 30 | **Разработка приложения** | 91.62d | 2022-01-10 | 2022-05-27 | 29 | Подрядчик RedMadRobot Приложение |

Changed:

| ID | Task | Start | Finish | Duration | Complete | Total float | Predecessors | Other |
| --- | --- | --- | --- | --- | --- | --- | --- | --- |
| 1 | **ПРОГрибы** |  | 2022-07-15 → 2022-08-29 (+45d) | 205d → 220.25d | 18% → 15% |  |  |  |
| 6 | Описание проекта составлено |  |  |  |  |  |  | was named Конец составления описания проекта |
| 12 | **Анализ рынка** |  | 2021-11-29 → 2021-11-03 A (-26d) | 30d → 12d | 88% → 100% | 163d → none |  |  |
| 13 | Поиск конкурентов |  | 2021-10-25 A → 2021-10-27 A (+2d) | 5d → 7d |  |  |  |  |
| 14 | Составление сравнительной таблицы | 2021-10-26 A → 2021-10-28 A (+2d) | 2021-11-29 → 2021-11-03 A (-26d) |  | 67% → 100% | 163d → none |  | constraint none → finish no earlier than 2021-11-02 |
| 15 | **Согласование бизнес требований** | 2021-10-28 A → 2021-11-04 A (+7d) | 2021-11-08 A → 2021-11-15 A (+7d) |  |  |  |  |  |
| 16 | Подготовка бизнес требований | 2021-10-28 A → 2021-11-04 A (+7d) | 2021-10-29 A → 2021-11-05 A (+7d) |  |  |  |  |  |
| 17 | Подготовка спецификации | 2021-11-01 A → 2021-11-08 A (+7d) | 2021-11-02 A → 2021-11-09 A (+7d) |  |  |  |  |  |
| 18 | Подготовка технического задания | 2021-11-03 A → 2021-11-10 A (+7d) | 2021-11-04 A → 2021-11-11 A (+7d) |  |  |  |  |  |
| 19 | Утверждение основных бизнес требований | 2021-11-05 A → 2021-11-12 A (+7d) | 2021-11-08 A → 2021-11-15 A (+7d) |  |  |  |  |  |
| 20 | Согласование бизнес требований | 2021-11-08 A → 2021-11-15 A (+7d) | 2021-11-08 A → 2021-11-15 A (+7d) |  |  |  |  |  |
| 21 | **Архитектура приложения** | 2021-11-09 A → 2021-11-16 A (+7d) | 2021-11-24 A → 2021-12-01 A (+7d) |  |  |  |  |  |
| 22 | Разработка архитектуры клиент-сервера | 2021-11-09 A → 2021-11-16 A (+7d) | 2021-11-15 A → 2021-11-22 A (+7d) |  |  |  |  |  |
| 23 | Подготовка архитектуры | 2021-11-16 A → 2021-11-23 A (+7d) | 2021-11-22 A → 2021-11-29 A (+7d) |  |  |  |  |  |
| 24 | Согласование с заказчиком | 2021-11-23 A → 2021-11-30 A (+7d) | 2021-11-24 A → 2021-12-01 A (+7d) |  |  |  |  |  |
| 25 | **Подгтовка дизайна приложения** | 2021-11-25 A → 2021-12-02 A (+7d) |  | 26d → 20.62d |  | 49d → 21.62d |  |  |
| 26 | Подготовка прототипа | 2021-11-25 A → 2021-12-02 A (+7d) | 2021-12-01 A → 2021-12-08 A (+7d) |  |  |  |  |  |
| 27 | Дизайн экранных форм | 2021-12-02 A → 2021-12-09 A (+7d) | 2021-12-08 A → 2021-12-16 A (+8d) |  |  |  |  |  |
| 28 | Презентация итоговой версии дизайна заказчику | 2021-12-09 A → 2021-12-16 A (+7d) | 2021-12-09 A → 2021-12-17 A (+8d) |  |  |  |  |  |
| 29 | Договор на реализацию подписан |  |  |  |  | 54d → 21.62d |  | was named Подписание договора на реализацию |
| 31 | **Серверная часть приложения** | 2022-01-17 → 2022-01-10 (-7d) |  | 44d → 46.62d |  | 36d → 16.12d |  |  |
| 32 | Адаптация алгоритма распознавания | 2022-01-17 → 2022-01-10 (-7d) | 2022-02-23 → 2022-02-17 (-6d) |  |  | 43d → 20.75d |  | constraint start no earlier than 2022-01-17 → start no earlier than 2021-12-28; resources Подрядчик MindBox Алгоритм [50%]; Подрядчик MindBox Приложение [50%] → none |
| 33 | Функционал системы сообществ | 2022-02-24 → 2022-02-17 (-7d) | 2022-03-15 → 2022-03-11 (-4d) |  |  | 43d → 20.75d |  | resources Подрядчик MindBox Приложение [15%] → none |
| 34 | Функционал вкладки рецептов | 2022-02-24 → 2022-02-17 (-7d) | 2022-03-04 → 2022-03-01 (-3d) |  |  | 43d → 20.75d |  | resources Подрядчик MindBox Приложение [15%] → none |
| 35 | Функционал личных сообщений | 2022-02-24 → 2022-02-17 (-7d) | 2022-03-04 → 2022-03-01 (-3d) |  |  | 43d → 20.75d |  | resources Подрядчик MindBox Приложение [15%] → none |
| 36 | Система достижений | 2022-02-24 → 2022-02-17 (-7d) | 2022-03-04 → 2022-03-01 (-3d) |  |  | 43d → 20.75d |  | resources Подрядчик MindBox Приложение [15%] → none |
| 37 | Совмещение грибных карт | 2022-02-24 → 2022-02-17 (-7d) | 2022-03-15 → 2022-03-11 (-4d) |  |  | 43d → 20.75d |  | resources Подрядчик MindBox Приложение [15%] → none |
| 38 | Менеджер аккаунтов | 2022-02-24 → 2022-02-17 (-7d) | 2022-03-15 → 2022-03-11 (-4d) |  |  | 43d → 20.75d |  | resources Подрядчик MindBox Приложение [15%] → none |
| 39 | Реализация биометрического входа | 2022-02-24 → 2022-02-17 (-7d) | 2022-03-15 → 2022-03-11 (-4d) |  |  | 43d → 20.75d |  | resources Подрядчик MindBox Приложение [15%] → none |
| 40 | BackEnd разработан |  |  |  |  | 41d → 16.12d |  | was named Окончание разработки BackEnd |
| 41 | **Клиентская часть** | 2022-01-17 → 2022-03-21 (+63d) | 2022-04-08 → 2022-05-26 (+48d) | 59d → 43.25d |  | 28d → 0d | none → 40 |  |
| 42 | Возможность автономной работы алгоритмв | 2022-01-17 → 2022-03-21 (+63d) | 2022-02-23 → 2022-04-28 (+64d) |  |  | 57d → 15.25d | 32SF → 32 | constraint start no earlier than 2022-01-17 → start no earlier than 2022-03-21; resources Подрядчик MindBox Алгоритм [50%]; Подрядчик MindBox Приложение [50%] → none |
| 43 | Разработка экранных форм | 2022-03-18 → 2022-05-04 (+47d) | 2022-03-28 → 2022-05-26 (+59d) | 7d → 14d |  | 41d → 0d | 42, 40 → 42FF, 40 | constraint none → start no earlier than 2022-05-02; resources Подрядчик MindBox Приложение [25%] → none |
| 44 | Реализация функции SOS | 2022-03-18 → 2022-05-04 (+47d) | 2022-03-28 → 2022-05-26 (+59d) | 7d → 14d |  | 41d → 0d |  | resources Подрядчик MindBox Приложение [25%] → none |
| 45 | Справочник | 2022-03-18 → 2022-05-04 (+47d) | 2022-03-28 → 2022-05-26 (+59d) | 7d → 14d |  | 41d → 0d |  | resources Подрядчик MindBox Приложение [25%] → none |
| 46 | Модуль навигации | 2022-03-18 → 2022-05-04 (+47d) | 2022-03-28 → 2022-05-26 (+59d) | 7d → 14d |  | 41d → 0d |  | resources Подрядчик MindBox Приложение [25%] → none |
| 47 | Приложение разработано | 2022-04-08 → 2022-05-26 (+48d) | 2022-04-08 → 2022-05-26 (+48d) |  |  | 33d → 0d | 46FF, 44FF, 45FF, 42FF, 43FF → 46FF, 44FF, 45FF, 42, 43FF | was named Окончание разработки приложения |
| 48 | **Тестирование приложения** | 2022-04-08 → 2022-05-26 (+48d) | 2022-06-07 → 2022-08-16 (+70d) | 43d → 56d |  | 27d → 0d |  |  |
| 49 | Модульное тестирование | 2022-04-08 → 2022-05-26 (+48d) | 2022-04-27 → 2022-06-16 (+50d) |  |  | 33d → 0d |  |  |
| 50 | Интеграционное тестирование | 2022-04-28 → 2022-06-16 (+49d) | 2022-05-06 → 2022-07-07 (+62d) | 7d → 14d |  | 28d → 0d |  |  |
| 51 | Нагрузочное тестирование | 2022-05-09 → 2022-07-07 (+59d) | 2022-05-17 → 2022-07-27 (+71d) | 7d → 14d |  | 28d → 0d |  |  |
| 52 | Тестирование обновлений | 2022-05-30 → 2022-07-27 (+58d) | 2022-06-07 → 2022-08-16 (+70d) | 7d → 14d |  | 20d → 0d |  |  |
| 53 | Тестирование интерфейса | 2022-05-09 → 2022-07-07 (+59d) | 2022-05-17 → 2022-07-27 (+71d) | 7d → 14d |  | 35d → 8d |  |  |
| 54 | Тестирование функции SOS | 2022-05-09 → 2022-07-07 (+59d) | 2022-05-17 → 2022-07-27 (+71d) | 7d → 14d |  | 42d → 22d |  |  |
| 55 | Тестирование функционала экранных форм | 2022-05-19 → 2022-07-27 (+69d) | 2022-05-30 → 2022-08-16 (+78d) | 7d → 14d |  | 34d → 8d |  |  |
| 56 | Приложение протестировано | 2022-06-07 → 2022-08-16 (+70d) | 2022-06-07 → 2022-08-16 (+70d) |  |  | 20d → 0d |  | was named Окончание тестирования приложения |
| 57 | **Релиз приложения** | 2022-06-08 → 2022-08-16 (+69d) | 2022-07-15 → 2022-08-29 (+45d) | 27d → 8d |  |  |  |  |
| 58 | Оформить Privacy Policy | 2022-06-08 → 2022-08-16 (+69d) | 2022-06-10 → 2022-08-19 (+70d) |  |  | 20d → 0d |  |  |
| 59 | Подготовить маркетинговые материалы | 2022-06-08 → 2022-08-16 (+69d) | 2022-06-10 → 2022-08-19 (+70d) |  |  | 20d → 0d |  |  |
| 60 | Обеспечить сборку наличием сертификата цифровой подписи | 2022-06-08 → 2022-08-16 (+69d) | 2022-06-08 → 2022-08-17 (+70d) |  |  | 20d → 0d |  |  |
| 61 | Настроить оплату за использование приложения | 2022-06-08 → 2022-08-16 (+69d) | 2022-06-16 → 2022-08-25 (+70d) |  |  | 20d → 0d |  |  |
| 62 | Отправить сборку в Google Play | 2022-06-08 → 2022-08-26 (+79d) | 2022-06-08 → 2022-08-29 (+82d) |  |  | 26d → 0d | 61SS → 61, 60, 59, 58 |  |
| 63 | DeadLine релиза в Google Play | 2022-07-15 → 2022-08-29 (+45d) | 2022-07-15 → 2022-08-29 (+45d) |  |  |  |  |  |
